# ljekarna

Schedule from MS Project, 2014-03-26 to 2014-06-24, costs in kn, A marks actual dates.
Ljekarna

## Calendars

- Standard: Mon-Fri 18:00-21:00; Sat-Sun off. Exceptions (off unless hours are given): 2014-05-01 (1.5.2014.), 2014-06-19 (19.6.2014).

## Resources

| Resource | Rate |
| --- | --- |
| Luka | 40 |
| Filip | 40 |
| Ivana | 40 |
| Tea | 40 |
| Josip | 40 |
| Laptop1 | 10 |
| Laptop2 | 10 |
| Laptop3 | 10 |
| Laptop4 | 10 |
| Laptop5 | 10 |
| Projektor | 10 |

## Schedule

| ID | WBS | Task | Type | Duration | Start | Finish | Predecessors | Complete | Remaining | Total slack | Resources | Work | Actual work | Cost | Actual cost |
| --- | --- | --- | --- | --- | --- | --- | --- | --- | --- | --- | --- | --- | --- | --- | --- |
| 1 | 1 | **Ljekarna.NET** |  | 23.5d | 2014-03-26 A | 2014-06-24 |  | 39% | 14.25d | 0d |  | 499h | 207h | 20,680 | 8,720 |
| 2 | 1.1 | POČETAK PROJEKTA | milestone | 0d | 2014-03-26 A | 2014-03-26 A |  | 100% |  |  |  |  |  |  |  |
| 3 | 1.2 | **Planiranje projekta** |  | 2.62d | 2014-03-26 A | 2014-04-03 A | 2 | 100% |  |  |  | 57h | 57h | 2,350 | 2,350 |
| 4 | 1.2.1 | Definiranje projektnog tima |  | 4h | 2014-03-26 A | 2014-03-27 A | 2 | 100% |  |  | Ivana; Josip; Luka; Tea; Filip | 20h | 20h | 800 | 800 |
| 5 | 1.2.2 | **Prvi sastanak** |  | 2.12d | 2014-03-27 A | 2014-04-03 A | 4 | 100% |  |  |  | 37h | 37h | 1,550 | 1,550 |
| 6 | 1.2.2.1 | Proučavanje korisničkih zahtjeva |  | 5h | 2014-03-27 A | 2014-03-28 A | 4 | 100% |  |  | Filip; Josip; Laptop1; Luka | 15h | 15h | 610 | 610 |
| 7 | 1.2.2.2 | **Definiranje projekta** |  | 1.5d | 2014-03-31 A | 2014-04-03 A | 6 | 100% |  |  |  | 22h | 22h | 940 | 940 |
| 8 | 1.2.2.2.1 | Opis domene projekta |  | 2h | 2014-03-31 A | 2014-03-31 A | 6 | 100% |  |  | Filip; Laptop1 | 2h | 2h | 90 | 90 |
| 9 | 1.2.2.2.2 | Dizajniranje arhitekture sustava |  | 5h | 2014-03-31 A | 2014-04-02 A | 8 | 100% |  |  | Ivana; Josip; Laptop2; Laptop3; Laptop4; Luka | 15h | 15h | 630 | 630 |
| 10 | 1.2.2.2.3 | Specificiranje funkcionalnosti aplikacije |  | 4h | 2014-04-02 A | 2014-04-03 A | 9 | 100% |  |  | Josip; Laptop3 | 4h | 4h | 170 | 170 |
| 11 | 1.2.2.2.4 | Odabir potrebne tehnologije |  | 1h | 2014-04-03 A | 2014-04-03 A | 10 | 100% |  |  | Filip; Laptop1 | 1h | 1h | 50 | 50 |
| 12 | 1.2.3 | ZAVRŠETAK PRVOG SASTANKA | milestone | 0d | 2014-04-03 A | 2014-04-03 A | 5 | 100% |  |  |  |  |  |  |  |
| 13 | 1.3 | ZAVRŠEKTA PLANIRANJA PROJEKTA | milestone | 0d | 2014-04-03 A | 2014-04-03 A | 3 | 100% |  |  |  |  |  |  |  |
| 14 | 1.4 | **Modeliranje** |  | 7d | 2014-04-04 A | 2014-04-30 | 13 | 95% | 0.38d | 0d |  | 157h | 150h | 6,690 | 6,370 |
| 15 | 1.4.1 | **Drugi sastanak** |  | 2.62d | 2014-04-04 A | 2014-04-14 A | 13 | 100% |  |  |  | 44h | 44h | 1,850 | 1,850 |
| 16 | 1.4.1.1 | Rekapitulacija prvog sastanka |  | 1h | 2014-04-04 A | 2014-04-04 A | 13 | 100% |  |  | Filip; Ivana; Josip; Luka; Tea | 5h | 5h | 200 | 200 |
| 17 | 1.4.1.2 | Raspodjela zadataka članovima tima |  | 1h | 2014-04-04 A | 2014-04-04 A | 16 | 100% |  |  | Luka | 1h | 1h | 40 | 40 |
| 18 | 1.4.1.3 | Specifikacija korisničkih zahtjeva |  | 4h | 2014-04-04 A | 2014-04-07 A | 17 | 100% |  |  | Filip; Laptop1; Laptop4; Luka | 8h | 8h | 340 | 340 |
| 19 | 1.4.1.4 | Analiza poslovne domene |  | 3h | 2014-04-08 A | 2014-04-08 A | 18 | 100% |  |  | Josip; Laptop3; Laptop5; Tea | 6h | 6h | 260 | 260 |
| 20 | 1.4.1.5 | Izrada gantograma aktivnosti |  | 6h | 2014-04-09 A | 2014-04-10 A | 19 | 100% |  |  | Josip; Laptop3; Ivana | 12h | 12h | 490 | 490 |
| 21 | 1.4.1.6 | Izrada proračuna i budžeta |  | 4h | 2014-04-11 A | 2014-04-14 A | 20 | 100% |  |  | Ivana; Laptop2; Laptop5; Tea | 8h | 8h | 340 | 340 |
| 22 | 1.4.1.7 | Izrada ponude naručitelju |  | 2h | 2014-04-14 A | 2014-04-14 A | 21 | 100% |  |  | Ivana; Laptop2; Laptop5; Tea | 4h | 4h | 180 | 180 |
| 23 | 1.4.2 | ZAVRŠETAK DRUGOG SASTANKA | milestone | 0d | 2014-04-14 A | 2014-04-14 A | 15 | 100% |  |  |  |  |  |  |  |
| 24 | 1.4.3 | **Modeliranje problemske domene UML dijagramima** |  | 3.5d | 2014-04-15 A | 2014-04-28 A | 23 | 100% |  |  |  | 86h | 86h | 3,710 | 3,710 |
| 25 | 1.4.3.1 | **Izrada UML dijagrama aktivnosti** |  | 1.75d | 2014-04-15 A | 2014-04-21 A | 23 | 100% |  |  |  | 44h | 44h | 1,950 | 1,950 |
| 26 | 1.4.3.1.1 | Dijagram aktivnosti naručivanja lijekova |  | 2h | 2014-04-15 A | 2014-04-15 A | 23 | 100% |  |  | Filip; Ivana; Laptop1; Laptop2; Josip; Tea | 8h | 8h | 340 | 340 |
| 27 | 1.4.3.1.2 | Dijagram aktivnosti unosa naručivanja |  | 2h | 2014-04-15 A | 2014-04-16 A | 26 | 100% |  |  | Filip; Ivana; Laptop1; Laptop2; Tea | 6h | 6h | 260 | 260 |
| 28 | 1.4.3.1.3 | Dijagram aktivnosti stanja i lokacije skladištenja |  | 2h | 2014-04-16 A | 2014-04-16 A | 27 | 100% |  |  | Ivana; Laptop5; Tea; Josip; Laptop2; Laptop3 | 6h | 6h | 270 | 270 |
| 29 | 1.4.3.1.4 | Dijagram aktivnosti provjere klijenta |  | 2h | 2014-04-17 A | 2014-04-17 A | 28 | 100% |  |  | Ivana; Josip; Laptop2; Laptop3; Laptop5; Tea | 6h | 6h | 270 | 270 |
| 30 | 1.4.3.1.5 | Dijagram aktivnosti ispisa računa |  | 2h | 2014-04-17 A | 2014-04-18 A | 29 | 100% |  |  | Ivana; Josip; Laptop2; Laptop3; Laptop5; Tea | 6h | 6h | 270 | 270 |
| 31 | 1.4.3.1.6 | Dijagram aktivnosti ažuriranja stanja lijekova |  | 2h | 2014-04-18 A | 2014-04-18 A | 30 | 100% |  |  | Ivana; Josip; Laptop2; Laptop3; Laptop5; Tea | 6h | 6h | 270 | 270 |
| 32 | 1.4.3.1.7 | Dijagram aktivnosti obavijesti o minimalnom stanju lijekova |  | 2h | 2014-04-21 A | 2014-04-21 A | 31 | 100% |  |  | Ivana; Josip; Laptop2; Laptop3; Laptop5; Tea | 6h | 6h | 270 | 270 |
| 33 | 1.4.3.2 | Izrada UML dijagrama slučajeva korištenja |  | 4h | 2014-04-21 A | 2014-04-22 A | 32 | 100% |  |  | Filip; Ivana; Laptop1; Laptop2 | 8h | 8h | 340 | 340 |
| 34 | 1.4.3.3 | Izrada UML dijagram klasa |  | 4h | 2014-04-23 A | 2014-04-24 A | 33 | 100% |  |  | Laptop4; Luka | 4h | 4h | 170 | 170 |
| 35 | 1.4.3.4 | Izrada projektne dokumentacije za prvu fazu |  | 6h | 2014-04-24 A | 2014-04-28 A | 34 | 100% |  |  | Filip; Ivana; Josip; Laptop1; Laptop2; Laptop3; Laptop4; Laptop5; Luka; Tea | 30h | 30h | 1,250 | 1,250 |

| ID | WBS | Task | Type | Duration | Start | Finish | Predecessors | Complete | Remaining | Total slack | Resources | Work | Actual work | Cost | Actual cost |
| --- | --- | --- | --- | --- | --- | --- | --- | --- | --- | --- | --- | --- | --- | --- | --- |
| 36 | 1.4.4 | **Modeliranje baze podataka** |  | 0.88d | 2014-04-28 A | 2014-04-30 | 35 | 57% | 0.38d | 0d |  | 27h | 20h | 1,130 | 810 |
| 37 | 1.4.4.1 | Izrada ERA modela |  | 4h | 2014-04-28 A | 2014-04-29 A | 35 | 100% |  |  | Filip; Ivana; Josip; Laptop4; Luka; Tea | 20h | 20h | 810 | 810 |
| 38 | 1.4.4.2 | PRVA PROVJERA | milestone | 0d | 2014-04-29 | 2014-04-29 | 37 |  |  | 0d |  |  |  |  |  |
| 39 | 1.4.4.3 | Generiranje SQL skripte |  | 2h | 2014-04-29 | 2014-04-30 | 38 |  |  | 0d | Filip; Luka; Laptop1; Laptop4 | 4h |  | 180 |  |
| 40 | 1.4.4.4 | Izrada idejnih skica ekrana |  | 1h | 2014-04-30 | 2014-04-30 | 39 |  |  | 0d | Filip; Laptop1; Laptop4; Luka; Tea | 3h |  | 140 |  |
| 41 | 1.5 | ZAVRŠETAK MODELIRANJA | milestone | 0d | 2014-04-30 | 2014-04-30 | 14 |  |  | 0d |  |  |  |  |  |
| 42 | 1.6 | **Realizacija programskog rješenja** |  | 13.75d | 2014-04-30 | 2014-06-24 | 41 |  |  | 0d |  | 280h |  | 11,420 |  |
| 43 | 1.6.1 | **Izrada aplikacije u .NET** |  | 9d | 2014-04-30 | 2014-06-04 | 41 |  |  | 0d |  | 156h |  | 6,360 |  |
| 44 | 1.6.1.1 | Izrada modula za pretraživanje lijekova |  | 14h | 2014-04-30 | 2014-05-08 | 41 |  |  | 0d | Filip; Laptop1; Laptop4; Luka | 28h |  | 1,140 |  |
| 45 | 1.6.1.2 | Izrada modula za prijavu u sustav |  | 12h | 2014-05-08 | 2014-05-14 | 44 |  |  | 0d | Ivana; Laptop2; Laptop5; Tea | 24h |  | 980 |  |
| 46 | 1.6.1.3 | Izrada modula za naručivanje lijekova |  | 12h | 2014-05-14 | 2014-05-20 | 45 |  |  | 0d | Filip; Josip; Laptop1; Laptop3 | 24h |  | 980 |  |
| 47 | 1.6.1.4 | Izrada modula za provjeru klijenta |  | 10h | 2014-05-20 | 2014-05-23 | 46 |  |  | 0d | Laptop4; Laptop5; Luka; Tea | 20h |  | 820 |  |
| 48 | 1.6.1.5 | Izrada modula za analizu poslovanja |  | 12h | 2014-05-23 | 2014-05-29 | 47 |  |  | 0d | Ivana; Laptop2; Laptop4; Luka; Tea | 36h |  | 1,460 |  |
| 49 | 1.6.1.6 | Izrada modula za izdavanje računa |  | 12h | 2014-05-29 | 2014-06-04 | 48 |  |  | 0d | Filip; Josip; Laptop1; Laptop3 | 24h |  | 980 |  |
| 50 | 1.6.2 | Testiranje programskog koda |  | 12h | 2014-06-04 | 2014-06-10 | 49 |  |  | 0d | Ivana; Laptop2; Laptop4; Laptop5; Luka; Tea | 36h |  | 1,470 |  |
| 51 | 1.6.3 | Dorada aplikacije |  | 14h | 2014-06-10 | 2014-06-17 | 50 |  |  | 0d | Filip; Josip; Laptop1; Laptop3 | 28h |  | 1,140 |  |
| 52 | 1.6.4 | Izrada projektne dokumentacije za završnu fazu |  | 12h | 2014-06-17 | 2014-06-24 | 51 |  |  | 0d | Filip; Ivana; Josip; Laptop1; Laptop2; Laptop3; Laptop4; Laptop5; Luka; Tea | 60h |  | 2,450 |  |
| 53 | 1.7 | REALIZACIJA ZAVRŠENA | milestone | 0d | 2014-06-24 | 2014-06-24 | 42 |  |  | 0d |  |  |  |  |  |
| 54 | 1.8 | **Isporuka programskog rješenja** |  | 0.12d | 2014-06-24 | 2014-06-24 | 53 |  |  | 0d |  | 5h |  | 220 |  |
| 55 | 1.8.1 | Javna prezentacija i obrana aplikacije |  | 1h | 2014-06-24 | 2014-06-24 | 53 |  |  | 0d | Filip; Ivana; Josip; Laptop1; Luka; Projektor; Tea | 5h |  | 220 |  |
| 56 | 2 | PROJEKT ZAVRŠEN | milestone | 0d | 2014-06-24 | 2014-06-24 | 1 |  |  | 0d |  |  |  |  |  |
